# Plan_SS17

Schedule from MS Project, 2023-04-06 to 2023-08-16, status date 2023-07-15, A marks actual dates.
Microsoft

## Calendars

- Standard: Mon-Fri 08:00-12:00, 13:00-17:00; Sat-Sun off.

## Resources

| Resource |
| --- |
| Firas Ben Yedder |
| Ahmed Kutbi |
| Nader Gong |
| Heltonn Harold |
| Alle |

## Schedule

| ID | WBS | Task | Type | Duration | Start | Finish | Predecessors | Complete | Remaining | Total slack | Free slack | Constraint | Deadline | Resources | Work | Actual work |
| --- | --- | --- | --- | --- | --- | --- | --- | --- | --- | --- | --- | --- | --- | --- | --- | --- |
| 1 | 1 | **Smart Türschloss** |  | 95d? | 2023-04-06 A | 2023-08-16 |  | 66% | 32.09d? |  |  |  |  |  | 551.68h | 280h |
| 2 | 1.1 | Kick-off | milestone | 1d? | 2023-04-06 A | 2023-04-06 A |  | 100% |  |  |  | start no earlier than 2023-04-06 | 2018-10-05 |  |  |  |
| 3 | 1.2 | Anforderungen erstellen |  | 16d | 2023-04-07 A | 2023-04-28 A | 2 | 100% |  |  |  | start no earlier than 2017-04-07 |  |  |  |  |
| 4 | 1.3 | Lastenheft | milestone | 1d? | 2023-04-28 A | 2023-04-28 A | 3FF | 100% |  |  |  | finish no earlier than 2023-04-29 |  |  |  |  |
| 5 | 1.4 | Konzept |  | 20d | 2023-05-01 A | 2023-05-26 A | 4 | 100% |  |  |  |  |  |  |  |  |
| 6 | 1.5 | Pflichtenheft | milestone | 1d? | 2023-05-26 A | 2023-05-26 A | 5FF | 100% |  |  |  | start no earlier than 2014-11-28 |  |  |  |  |
| 7 | 1.6 | Sprint 1 |  | 15d | 2023-05-29 A | 2023-06-16 A | 6 | 100% |  |  |  |  |  |  |  |  |
| 8 | 1.7 | Design des Gehäuses |  | 4d | 2023-05-29 A | 2023-06-01 A | 7SS | 100% |  |  |  |  |  | Nader Gong [50%]; Heltonn Harold [50%] | 32h | 32h |
| 9 | 1.8 | Erstellen der Schaltung |  | 4d | 2023-05-29 A | 2023-06-01 A | 7SS | 100% |  |  |  |  |  | Ahmed Kutbi [50%]; Firas Ben Yedder [50%] | 32h | 32h |
| 10 | 1.9 | Einrichtung der Entwicklungsumgebung |  | 1d | 2023-06-02 A | 2023-06-02 A | 8 | 100% |  |  |  |  |  |  |  |  |
| 11 | 1.10 | Einrichtung der Sensoren/Elektronik |  | 7d | 2023-06-05 A | 2023-06-13 A | 10 | 100% |  |  |  |  |  | Firas Ben Yedder [50%]; Nader Gong [50%] | 56h | 56h |
| 12 | 1.11 | Programmierung der Microcontroller |  | 7d | 2023-06-05 A | 2023-06-13 A | 10 | 100% |  |  |  |  |  | Heltonn Harold [50%]; Ahmed Kutbi [50%] | 56h | 56h |
| 13 | 1.12 | Dokumentation | manual | 1d | 2023-06-16 A | 2023-06-16 A | 11 | 100% |  |  |  | finish no earlier than 2023-06-16 |  |  |  |  |
| 14 | 1.13 | Sprint 2 |  | 20d | 2023-06-19 A | 2023-07-14 A | 7 | 100% |  |  |  |  |  |  |  |  |
| 15 | 1.14 | Entwicklungsumgebung aufsetzen |  | 3d | 2023-06-19 A | 2023-06-21 A | 14SS | 100% |  |  |  |  |  |  |  |  |
| 16 | 1.15 | Konfiguration von Drupal |  | 3d | 2023-06-22 A | 2023-06-26 A | 15 | 100% |  |  |  |  |  |  |  |  |
| 17 | 1.16 | **Entwicklung der Drupal-Website** |  | 10d | 2023-06-27 A | 2023-07-10 A |  | 100% |  |  |  |  |  |  | 80h | 80h |
| 18 | 1.16.1 | Anmeldung und Login Funktionalitäten implementieren |  | 3d | 2023-06-27 A | 2023-06-29 A | 16 | 100% |  |  |  |  |  | Nader Gong | 24h | 24h |
| 19 | 1.16.2 | Dashboard Home erstellen |  | 3d | 2023-06-30 A | 2023-07-04 A | 18 | 100% |  |  |  |  |  | Firas Ben Yedder | 24h | 24h |
| 20 | 1.16.3 | Schlüssel-buchen Funktionalität implementieren |  | 4d | 2023-07-05 A | 2023-07-10 A | 19 | 100% |  |  |  |  |  | Heltonn Harold | 32h | 32h |
| 21 | 1.17 | Einrichtung der Datenbank |  | 3d | 2023-07-11 A | 2023-07-13 A | 20 | 100% |  |  |  |  |  | Nader Gong [50%]; Ahmed Kutbi [50%] | 24h | 24h |
| 22 | 1.18 | Dokumentation | manual | 1d | 2023-07-14 A | 2023-07-14 A | 21 | 100% |  |  |  |  |  |  |  |  |
| 23 | 1.19 | Sprint 3 |  | 20d | 2023-07-17 | 2023-08-11 | 14 |  |  | 1d | 0d |  |  |  |  |  |
| 24 | 1.20 | **weitere Entwicklung der Drupal Webseite** |  | 10d | 2023-07-17 | 2023-07-28 |  |  |  |  |  |  |  |  | 255.68h |  |
| 25 | 1.20.1 | Verfügbarkeit der Schlüssel anzeigen Funktionalität implementieren |  | 6d | 2023-07-17 | 2023-07-24 | 23SS |  |  | 1d | 0d |  |  | Ahmed Kutbi | 48h |  |
| 26 | 1.20.2 | Schlüssel Überwachung Funktionalität implementieren |  | 6d | 2023-07-17 | 2023-07-24 |  |  |  | 1d | 0d |  |  | Nader Gong | 48h |  |
| 27 | 1.20.3 | Schlüssel Verwaltung Funktionalität implementieren |  | 6d | 2023-07-17 | 2023-07-24 |  |  |  | 1d | 0d |  |  | Heltonn Harold | 48h |  |
| 28 | 1.20.4 | Admin Verwaltung Funktionalität implementieren |  | 5d | 2023-07-17 | 2023-07-21 |  |  |  | 13d | 0d |  |  | Firas Ben Yedder | 40h |  |
| 29 | 1.20.5 | Implementierung von Benutzerverwaltungsfunktionalität |  | 5d | 2023-07-24 | 2023-07-28 | 28 |  |  | 13d |  |  |  | Firas Ben Yedder | 40h |  |
| 30 | 1.20.6 | ntegration eines E-Mail-Dienstes (z. B. SMTP) |  | 4d | 2023-07-25 | 2023-07-28 | 27, 25, 26 |  |  | 1d | 0d |  |  | Ahmed Kutbi [33%]; Heltonn Harold [33%]; Nader Gong [33%] | 31.68h |  |
| 31 | 1.21 | Einrichten der Datenbankverbindung |  | 6d | 2023-07-31 | 2023-08-07 | 30 |  |  | 1d | 0d |  |  |  |  |  |
| 32 | 1.22 | Software Testen |  | 1d | 2023-08-08 | 2023-08-08 | 31 |  |  | 6d |  |  |  | Firas Ben Yedder | 8h |  |
| 33 | 1.23 | Hardware Testen |  | 1d | 2023-08-08 | 2023-08-08 | 31 |  |  | 1d | 0d |  |  | Ahmed Kutbi | 8h |  |
| 34 | 1.24 | Dokumentation | manual | 2d | 2023-08-09 | 2023-08-10 | 33 |  |  |  |  |  |  |  |  |  |
| 35 | 1.25 | Qualitätssicherung |  | 55d | 2023-05-29 A | 2023-08-11 | 6 | 64% | 20d | 3d |  |  |  |  |  |  |
| 36 | 1.26 | Testfälle Sprint 1 | milestone | 1d? | 2023-06-16 A | 2023-06-16 A | 7FF | 100% |  |  |  |  |  |  |  |  |
| 37 | 1.27 | Testfälle Sprint 2 | milestone | 1d? | 2023-07-14 A | 2023-07-14 A | 14FF | 100% |  |  |  |  |  |  |  |  |
| 38 | 1.28 | Testfälle Sprint 3 | milestone | 1d? | 2023-08-11 | 2023-08-11 | 23FF |  |  | 3d |  |  |  |  |  |  |
| 39 | 1.29 | Projektmanagement |  | 75d | 2023-05-01 A | 2023-08-11 | 4 | 73% | 20d | 3d |  |  |  |  |  |  |
| 40 | 1.30 | Projektplan 1 | milestone | 1d? | 2023-05-26 A | 2023-05-26 A | 6FF | 100% |  |  |  | finish no earlier than 2023-05-25 |  |  |  |  |
| 41 | 1.31 | Projektplan 2 | milestone | 1d? | 2023-07-14 A | 2023-07-14 A | 14FF | 100% |  |  |  | finish no earlier than 2023-05-25 |  |  |  |  |
| 42 | 1.32 | Teschnische Spezifikation |  | 55d? | 2023-05-29 A | 2023-08-11 | 6 | 64% | 20d? | 3d |  | finish no earlier than 2023-08-11 |  |  |  |  |
| 43 | 1.33 | tech. Spezifikation Version 1 | milestone | 1d? | 2023-06-16 A | 2023-06-16 A | 7FF | 100% |  |  |  | finish no earlier than 2023-05-25 |  |  |  |  |
| 44 | 1.34 | tech. Spezifikation Version 2 | milestone | 1d? | 2023-07-14 A | 2023-07-14 A | 14FF | 100% |  |  |  | finish no earlier than 2023-05-25 |  |  |  |  |
| 45 | 1.35 | tech. Spezifikation Version 3 | milestone | 1d? | 2023-08-11 | 2023-08-11 | 23FF |  |  | 3d |  | finish no earlier than 2023-05-25 |  |  |  |  |
| 46 | 1.36 | Abnahme |  | 3d | 2023-08-14 | 2023-08-16 | 34 |  |  | 0d |  | finish no earlier than 2023-08-16 |  |  |  |  |

Notes:
- 10: ·Drupal Instanz erstellen / ·Alle notwendigen Tools und Software installieren
- 13: teschnische Spezifikation (Version 1)
- 15: Entwicklungsumgebung aufsetzen, um die Entwicklung an den Website durchzuführen : / ·Zugriff auf den Server erhalten / ·Docker installieren / ·Überprüfen, ob die Docker-Container ordnungsgemäß gestartet und verbunden sind
- 16: Konfiguration von Drupal gemäß den Anforderungen des Projekts vornehmen (z. B. Website-Titel, Spracheinstellungen, Themen)
- 19: Dashboard Home erstellen
- 21: ·Verbindung zur Datenbank herstellen und die erforderlichen Einstellungen vornehmen / ·Erstellung von Datenbanktabellen und -feldern zur Speicherung der erforderlichen Informationen (Benutzerdaten, Buchungsdaten, Schlüsselinformationen usw.) / ·Schlüsselbox korrekt mit der Datenbank verbinden
- 22: Technische Sperzifikation (Version 2 als Erweiterung von Version 1)
- 27: · Bereitstellen einer Funktion für Administratoren zur Verwaltung der Schlüsselinformationen / · Erstellung einer Administratorenseite zum Hinzufügen, Bearbeiten oder Löschen von Schlüsseln / · Aktualisierung der Schlüsseldaten in der Datenbank
- 30: Integration eines E-Mail-Dienstes (z. B. SMTP) zur Übermittlung Bestätigungsmails an die entsprechenden Benutzer für erfolgreiche Buchungen oder Stornierungen
- 31: ·Einrichten der Datenbankverbindung, um Buchungsdaten zu speichern und abzurufen / ·Verbindung der Schlüsselbox mit der Drupal-Datenbank, um Buchungsdaten zu synchronisieren
- 34: Teschnische Spezifikation (Version 3 als Erweiterung von Version 2)
